| crew | duration | ef | endDate | es | id | lf | ls | name | packageCode | phase | startDate | totalFloat | trade |
| --- | --- | --- | --- | --- | --- | --- | --- | --- | --- | --- | --- | --- | --- |
| computed withheld from client view 0 | input SKF, Pune Schedule.xlsx · task row 1 (planned WORK DAYS) 6 | 0 | 2026-06-13 | 0 | t1 | 0 | 0 | Site Marking & Dilapidation Report | GSS | Site Prep | 2026-06-08 | 0 | general |
| computed withheld from client view 0 | input SKF, Pune Schedule.xlsx · task row 2 (planned WORK DAYS) 2 | 0 | 2026-06-11 | 0 | t2 | 0 | 0 | Temporary Power | GSS | Site Prep | 2026-06-10 | 0 | electrical |
| computed withheld from client view 0 | input SKF, Pune Schedule.xlsx · task row 3 (planned WORK DAYS) 4 | 0 | 2026-06-15 | 0 | t3 | 0 | 0 | Furniture Marking | GSS | Site Prep | 2026-06-12 | 0 | general |
| computed withheld from client view 0 | input SKF, Pune Schedule.xlsx · task row 4 (planned WORK DAYS) 22 | 0 | 2026-07-12 | 0 | t4 | 0 | 0 | Blockwork, AAC Blocks & Plastering | A1 | Civil Work | 2026-06-21 | 0 | civil |
| computed withheld from client view 0 | input SKF, Pune Schedule.xlsx · task row 11 (planned WORK DAYS) 18 | 0 | 2026-07-10 | 0 | t11 | 0 | 0 | 100mm Partition Framing | A2 | Partition & Paneling | 2026-06-23 | 0 | partition |
| computed withheld from client view 0 | input SKF, Pune Schedule.xlsx · task row 12 (planned WORK DAYS) 10 | 0 | 2026-07-11 | 0 | t12 | 0 | 0 | Gypsum Panelling | A2 | Partition & Paneling | 2026-07-02 | 0 | partition |
| computed withheld from client view 0 | input SKF, Pune Schedule.xlsx · task row 13 (planned WORK DAYS) 8 | 0 | 2026-07-10 | 0 | t13 | 0 | 0 | Gypsum Wall Punning | A2 | Partition & Paneling | 2026-07-03 | 0 | partition |
| computed withheld from client view 0 | input SKF, Pune Schedule.xlsx · task row 14 (planned WORK DAYS) 12 | 0 | 2026-07-14 | 0 | t14 | 0 | 0 | Column Cladding (Ply/Gypsum) | A2 | Partition & Paneling | 2026-07-03 | 0 | carpentry |
| computed withheld from client view 0 | input SKF, Pune Schedule.xlsx · task row 15 (planned WORK DAYS) 14 | 0 | 2026-07-21 | 0 | t15 | 0 | 0 | Glass Partition | A3 | Partition & Paneling | 2026-07-08 | 0 | glass |
| computed withheld from client view 0 | input SKF, Pune Schedule.xlsx · task row 20 (planned WORK DAYS) 21 | 0 | 2026-07-22 | 0 | t20 | 0 | 0 | GI Cable Trays, Trunking & MS Supports | C1 | Electrical & Networking | 2026-07-02 | 0 | electrical |
| computed withheld from client view 0 | input SKF, Pune Schedule.xlsx · task row 21 (planned WORK DAYS) 20 | 0 | 2026-07-14 | 0 | t21 | 0 | 0 | Raceway Trunking & Installation | C1 | Electrical & Networking | 2026-06-25 | 0 | electrical |
| computed withheld from client view 0 | input SKF, Pune Schedule.xlsx · task row 16 (planned WORK DAYS) 8 | 0 | 2026-07-13 | 0 | t16 | 0 | 0 | Gypsum False Ceiling | A2 | False Ceiling | 2026-07-06 | 0 | ceiling |
| computed withheld from client view 0 | input SKF, Pune Schedule.xlsx · task row 17 (planned WORK DAYS) 6 | 0 | 2026-07-17 | 0 | t17 | 0 | 0 | Metal / Fire-rated Ceiling | A2 | False Ceiling | 2026-07-12 | 0 | ceiling |
| computed withheld from client view 0 | input SKF, Pune Schedule.xlsx · task row 18 (planned WORK DAYS) 6 | 0 | 2026-07-12 | 0 | t18 | 0 | 0 | Designer Ceiling — Laminate Finish | A2 | False Ceiling | 2026-07-07 | 0 | ceiling |
| computed withheld from client view 0 | input SKF, Pune Schedule.xlsx · task row 19 (planned WORK DAYS) 5 | 0 | 2026-07-19 | 0 | t19 | 0 | 0 | Acoustic Baffle Ceiling | A2 | False Ceiling | 2026-07-15 | 0 | ceiling |
| computed withheld from client view 0 | input SKF, Pune Schedule.xlsx · task row 22 (planned WORK DAYS) 21 | 0 | 2026-07-29 | 0 | t22 | 0 | 0 | GI Conduiting & Switch/Point Back-boxes | C1 | Electrical & Networking | 2026-07-09 | 0 | electrical |
| computed withheld from client view 0 | input SKF, Pune Schedule.xlsx · task row 23 (planned WORK DAYS) 21 | 0 | 2026-08-05 | 0 | t23 | 0 | 0 | Point Wiring, Circuits, Mains & DB's | C1 | Electrical & Networking | 2026-07-16 | 0 | electrical |
| computed withheld from client view 0 | input SKF, Pune Schedule.xlsx · task row 24 (planned WORK DAYS) 11 | 0 | 2026-07-31 | 0 | t24 | 0 | 0 | LT Panel Labeling | C1 | Electrical & Networking | 2026-07-21 | 0 | electrical |
| computed withheld from client view 0 | input SKF, Pune Schedule.xlsx · task row 25 (planned WORK DAYS) 3 | 0 | 2026-08-01 | 0 | t25 | 0 | 0 | Panel Installation — Testing & Commissioning | C1 | Electrical & Networking | 2026-07-30 | 0 | electrical |
| computed withheld from client view 0 | input SKF, Pune Schedule.xlsx · task row 26 (planned WORK DAYS) 18 | 0 | 2026-07-21 | 0 | t26 | 0 | 0 | GI Sheet Ducting Fabrication & Installation | HVAC | HVAC | 2026-07-04 | 0 | hvac |
| computed withheld from client view 0 | input SKF, Pune Schedule.xlsx · task row 27 (planned WORK DAYS) 2 | 0 | 2026-07-17 | 0 | t27 | 0 | 0 | Duct Light Testing (Pre-insulation) | HVAC | HVAC | 2026-07-16 | 0 | hvac |
| computed withheld from client view 0 | input SKF, Pune Schedule.xlsx · task row 28 (planned WORK DAYS) 9 | 0 | 2026-07-26 | 0 | t28 | 0 | 0 | Thermal & Acoustic Insulation | HVAC | HVAC | 2026-07-18 | 0 | hvac |
| computed withheld from client view 0 | input SKF, Pune Schedule.xlsx · task row 29 (planned WORK DAYS) 9 | 0 | 2026-07-29 | 0 | t29 | 0 | 0 | Grilles, Diffusers, Fire Dampers & Actuators | HVAC | HVAC | 2026-07-21 | 0 | hvac |
| computed withheld from client view 0 | input SKF, Pune Schedule.xlsx · task row 30 (planned WORK DAYS) 4 | 0 | 2026-07-21 | 0 | t30 | 0 | 0 | Battery Room Ventilation | HVAC | HVAC | 2026-07-18 | 0 | hvac |
| computed withheld from client view 0 | input SKF, Pune Schedule.xlsx · task row 31 (planned WORK DAYS) 11 | 0 | 2026-07-15 | 0 | t31 | 0 | 0 | Refrigerant Piping & Cable Trays | HVAC | HVAC | 2026-07-05 | 0 | hvac |
| computed withheld from client view 0 | input SKF, Pune Schedule.xlsx · task row 32 (planned WORK DAYS) 7 | 0 | 2026-07-27 | 0 | t32 | 0 | 0 | Indoor Units Installation | HVAC | HVAC | 2026-07-21 | 0 | hvac |
| computed withheld from client view 0 | input SKF, Pune Schedule.xlsx · task row 33 (planned WORK DAYS) 5 | 0 | 2026-07-20 | 0 | t33 | 0 | 0 | VRV Requirements and ODUs | HVAC | HVAC | 2026-07-16 | 0 | hvac |
| computed withheld from client view 0 | input SKF, Pune Schedule.xlsx · task row 34 (planned WORK DAYS) 3 | 0 | 2026-07-30 | 0 | t34 | 0 | 0 | HVAC Testing & Commissioning | HVAC | HVAC | 2026-07-28 | 0 | hvac |
| computed withheld from client view 0 | input SKF, Pune Schedule.xlsx · task row 35 (planned WORK DAYS) 10 | 0 | 2026-07-06 | 0 | t35 | 0 | 0 | C-Class Sprinkler Piping (Grooved) | FSY | Sprinkler Work | 2026-06-27 | 0 | sprinkler |
| computed withheld from client view 0 | input SKF, Pune Schedule.xlsx · task row 36 (planned WORK DAYS) 10 | 0 | 2026-08-07 | 0 | t36 | 0 | 0 | Alarm Valve Assembly & Flow Switch | FSY | Sprinkler Work | 2026-07-29 | 0 | sprinkler |
| computed withheld from client view 0 | input SKF, Pune Schedule.xlsx · task row 37 (planned WORK DAYS) 7 | 0 | 2026-07-08 | 0 | t37 | 0 | 0 | Pendent/Upright Sprinklers & Flexible Drops | FSY | Sprinkler Work | 2026-07-02 | 0 | sprinkler |
| computed withheld from client view 0 | input SKF, Pune Schedule.xlsx · task row 38 (planned WORK DAYS) 3 | 0 | 2026-07-20 | 0 | t38 | 0 | 0 | Sprinkler Testing & Commissioning | FSY | Sprinkler Work | 2026-07-18 | 0 | sprinkler |
| computed withheld from client view 0 | input SKF, Pune Schedule.xlsx · task row 39 (planned WORK DAYS) 15 | 0 | 2026-07-25 | 0 | t39 | 0 | 0 | Red/Black Armored Cabling (FAS/PA/CCTV) | FSY | LV Systems | 2026-07-11 | 0 | lv |
| computed withheld from client view 0 | input SKF, Pune Schedule.xlsx · task row 40 (planned WORK DAYS) 9 | 0 | 2026-07-28 | 0 | t40 | 0 | 0 | Detectors, Hooters & PAVA Rack Commissioning | FSY | LV Systems | 2026-07-20 | 0 | lv |
| computed withheld from client view 0 | input SKF, Pune Schedule.xlsx · task row 41 (planned WORK DAYS) 9 | 0 | 2026-07-26 | 0 | t41 | 0 | 0 | EM Locks, Biometric Readers & CCTV | FSY | LV Systems | 2026-07-18 | 0 | lv |
| computed withheld from client view 0 | input SKF, Pune Schedule.xlsx · task row 42 (planned WORK DAYS) 9 | 0 | 2026-07-30 | 0 | t42 | 0 | 0 | Emergency Exit Signage | FSY | LV Systems | 2026-07-22 | 0 | lv |
| computed withheld from client view 0 | input SKF, Pune Schedule.xlsx · task row 43 (planned WORK DAYS) 7 | 0 | 2026-07-28 | 0 | t43 | 0 | 0 | Rodent Repellent System | FSY | LV Systems | 2026-07-22 | 0 | lv |
| computed withheld from client view 0 | input SKF, Pune Schedule.xlsx · task row 44 (planned WORK DAYS) 7 | 0 | 2026-07-28 | 0 | t44 | 0 | 0 | Water Leak Detection System | FSY | LV Systems | 2026-07-22 | 0 | lv |
| computed withheld from client view 0 | input SKF, Pune Schedule.xlsx · task row 45 (planned WORK DAYS) 20 | 0 | 2026-07-25 | 0 | t45 | 0 | 0 | Reception Table | A2 | Doors & Carpentry | 2026-07-06 | 0 | carpentry |
| computed withheld from client view 0 | input SKF, Pune Schedule.xlsx · task row 46 (planned WORK DAYS) 10 | 0 | 2026-07-20 | 0 | t46 | 0 | 0 | Flush Doors | A2 | Doors & Carpentry | 2026-07-11 | 0 | carpentry |
| computed withheld from client view 0 | input SKF, Pune Schedule.xlsx · task row 47 (planned WORK DAYS) 6 | 0 | 2026-07-13 | 0 | t47 | 0 | 0 | Glass Doors | A3 | Doors & Carpentry | 2026-07-08 | 0 | glass |
| computed withheld from client view 0 | input SKF, Pune Schedule.xlsx · task row 48 (planned WORK DAYS) 5 | 0 | 2026-07-31 | 0 | t48 | 0 | 0 | Back Painted Glass | A3 | Doors & Carpentry | 2026-07-27 | 0 | glass |
| computed withheld from client view 0 | input SKF, Pune Schedule.xlsx · task row 5 (planned WORK DAYS) 12 | 0 | 2026-07-11 | 0 | t5 | 0 | 0 | Plumbing Internal Piping | PHE | Civil Work | 2026-06-30 | 0 | plumbing |
| computed withheld from client view 0 | input SKF, Pune Schedule.xlsx · task row 56 (planned WORK DAYS) 20 | 0 | 2026-08-11 | 0 | t56 | 0 | 0 | Internal Walls (Putty + Paint) | A2 | Finishing | 2026-07-23 | 0 | painting |
| computed withheld from client view 0 | input SKF, Pune Schedule.xlsx · task row 49 (planned WORK DAYS) 3 | 0 | 2026-07-27 | 0 | t49 | 0 | 0 | Acoustical Panels | A2 | Doors & Carpentry | 2026-07-25 | 0 | carpentry |
| computed withheld from client view 0 | input SKF, Pune Schedule.xlsx · task row 57 (planned WORK DAYS) 12 | 0 | 2026-08-05 | 0 | t57 | 0 | 0 | Ceiling Painting | A2 | Finishing | 2026-07-25 | 0 | painting |
| computed withheld from client view 0 | input SKF, Pune Schedule.xlsx · task row 51 (planned WORK DAYS) 11 | 0 | 2026-08-04 | 0 | t51 | 0 | 0 | Manager/Meeting Room Tables | B2 | Modular Placement | 2026-07-25 | 0 | modular |
| computed withheld from client view 0 | input SKF, Pune Schedule.xlsx · task row 52 (planned WORK DAYS) 11 | 0 | 2026-08-04 | 0 | t52 | 0 | 0 | Planter Box / OHU / File Storage | A7 | Modular Placement | 2026-07-25 | 0 | carpentry |
| computed withheld from client view 0 | input SKF, Pune Schedule.xlsx · task row 6 (planned WORK DAYS) 6 | 0 | 2026-07-16 | 0 | t6 | 0 | 0 | Waterproofing (Floor + Walls 600mm) | A1 | Civil Work | 2026-07-11 | 0 | civil |
| computed withheld from client view 0 | input SKF, Pune Schedule.xlsx · task row 60 (planned WORK DAYS) 3 | 0 | 2026-08-01 | 0 | t60 | 0 | 0 | Frosting | A5 | Finishing | 2026-07-30 | 0 | finishing |
| computed withheld from client view 0 | input SKF, Pune Schedule.xlsx · task row 61 (planned WORK DAYS) 3 | 0 | 2026-08-01 | 0 | t61 | 0 | 0 | Vinyl Pasting | A5 | Finishing | 2026-07-30 | 0 | finishing |
| computed withheld from client view 0 | input SKF, Pune Schedule.xlsx · task row 62 (planned WORK DAYS) 3 | 0 | 2026-08-01 | 0 | t62 | 0 | 0 | Wallpaper Pasting | A5 | Finishing | 2026-07-30 | 0 | finishing |
| computed withheld from client view 0 | input SKF, Pune Schedule.xlsx · task row 63 (planned WORK DAYS) 2 | 0 | 2026-08-04 | 0 | t63 | 0 | 0 | Logo Installation | A4 | Finishing | 2026-08-03 | 0 | finishing |
| computed withheld from client view 0 | input SKF, Pune Schedule.xlsx · task row 64 (planned WORK DAYS) 2 | 0 | 2026-08-05 | 0 | t64 | 0 | 0 | Rolling Blinds | A6 | Finishing | 2026-08-04 | 0 | finishing |
| computed withheld from client view 0 | input SKF, Pune Schedule.xlsx · task row 65 (planned WORK DAYS) 2 | 0 | 2026-08-05 | 0 | t65 | 0 | 0 | Planters & Frames | A4 | Finishing | 2026-08-04 | 0 | finishing |
| computed withheld from client view 0 | input SKF, Pune Schedule.xlsx · task row 66 (planned WORK DAYS) 4 | 0 | 2026-08-02 | 0 | t66 | 0 | 0 | Sun Control Film | A5 | Finishing | 2026-07-30 | 0 | finishing |
| computed withheld from client view 0 | input SKF, Pune Schedule.xlsx · task row 67 (planned WORK DAYS) 4 | 0 | 2026-08-09 | 0 | t67 | 0 | 0 | Signage Installation | A4 | Finishing | 2026-08-06 | 0 | finishing |
| computed withheld from client view 0 | input SKF, Pune Schedule.xlsx · task row 7 (planned WORK DAYS) 6 | 0 | 2026-06-27 | 0 | t7 | 0 | 0 | Anti-termite & Pest Control | A1 | Civil Work | 2026-06-22 | 0 | civil |
| computed withheld from client view 0 | input SKF, Pune Schedule.xlsx · task row 8 (planned WORK DAYS) 4 | 0 | 2026-07-06 | 0 | t8 | 0 | 0 | Self Leveling & Associated Works | A1 | Civil Work | 2026-07-03 | 0 | civil |
| computed withheld from client view 0 | input SKF, Pune Schedule.xlsx · task row 9 (planned WORK DAYS) 4 | 0 | 2026-07-23 | 0 | t9 | 0 | 0 | Vitrified Tile Works | A2 | Civil Work | 2026-07-20 | 0 | flooring |
| computed withheld from client view 0 | input SKF, Pune Schedule.xlsx · task row 10 (planned WORK DAYS) 6 | 0 | 2026-07-25 | 0 | t10 | 0 | 0 | POP on Flooring (Protection) | A1 | Civil Work | 2026-07-20 | 0 | civil |
| computed withheld from client view 0 | input SKF, Pune Schedule.xlsx · task row 53 (planned WORK DAYS) 11 | 0 | 2026-08-04 | 0 | t53 | 0 | 0 | Raised Flooring | A2 | Modular Placement | 2026-07-25 | 0 | flooring |
| computed withheld from client view 0 | input SKF, Pune Schedule.xlsx · task row 50 (planned WORK DAYS) 12 | 0 | 2026-08-08 | 0 | t50 | 0 | 0 | Modular Workstations | B2 | Modular Placement | 2026-07-28 | 0 | modular |
| computed withheld from client view 0 | input SKF, Pune Schedule.xlsx · task row 54 (planned WORK DAYS) 10 | 0 | 2026-08-11 | 0 | t54 | 0 | 0 | WS / Meeting Room Chair Placement | B3 | Modular Placement | 2026-08-02 | 0 | modular |
| computed withheld from client view 0 | input SKF, Pune Schedule.xlsx · task row 55 (planned WORK DAYS) 7 | 0 | 2026-08-08 | 0 | t55 | 0 | 0 | Loose Furniture | B3 | Modular Placement | 2026-08-02 | 0 | modular |
| computed withheld from client view 0 | input SKF, Pune Schedule.xlsx · task row 58 (planned WORK DAYS) 5 | 0 | 2026-07-29 | 0 | t58 | 0 | 0 | Carpet Installation | B1 | Finishing | 2026-07-25 | 0 | flooring |
| computed withheld from client view 0 | input SKF, Pune Schedule.xlsx · task row 59 (planned WORK DAYS) 2 | 0 | 2026-07-23 | 0 | t59 | 0 | 0 | Aluminium Skirting | A2 | Finishing | 2026-07-22 | 0 | finishing |
| computed withheld from client view 0 | input SKF, Pune Schedule.xlsx · task row 68 (planned WORK DAYS) 12 | 0 | 2026-08-12 | 0 | t68 | 0 | 0 | Deep Cleaning | GSS | Finishing | 2026-08-01 | 0 | cleaning |
| computed withheld from client view 0 | input SKF, Pune Schedule.xlsx · task row 69 (planned WORK DAYS) 10 | 0 | 2026-08-14 | 0 | t69 | 0 | 0 | Snag List & Handover | GSS | Handover | 2026-08-05 | 0 | general |
